# Lab Project

Schedule from MS Project, 2023-02-20 to 2024-06-26, costs in $.
BIM&CS, Karachi

## Calendars

- Standard: Mon-Fri 08:00-12:00, 13:00-17:00; Sat-Sun off. Exceptions (off unless hours are given): 2023-03-23 (Pakistan Day), 2023-05-01 (May Day), 2023-06-15 to 2023-06-20 (Eid-ul-Fitir), 2023-07-31 to 2023-08-04 (Eid-Ul-Azha), 2023-11-09 (Iqbal Day), 2023-12-18 (Annual Dinner), 2023-12-25 (Birth day of Quaid-e-Azam).

## Resources

| Resource | Rate |
| --- | --- |
| Sana Khan Saleem | 150 |
| Aziz Abdullah | 100 |
| Erum Jabeen | 100 |
| M. Fahad Mahar | 50 |
| M. Fahad Khan | 100 |
| M. Fahad Khan | 100 |
| Barkat Ali Sheikh | 7.21 |
| M. Rashid Iqbal | 84.13 |
| Affaf Ali Mughal | 100 |
| Naveen Ahsan | 80 |
| Nida Rizwan | 50 |
| Nina Saleem | 50 |

## Schedule

| ID | WBS | Task | Duration | Start | Finish | Predecessors | Total slack | Free slack | Constraint | Resources | Work | Cost | Text1 |
| --- | --- | --- | --- | --- | --- | --- | --- | --- | --- | --- | --- | --- | --- |
| 1 | 1 | **Phase 1: Preliminary Investigation** | 112.53d | 2023-02-20 | 2023-08-10 |  | 19.87d |  |  |  | 1730h | 191,038.92 | Phase 1: |
| 2 | 1.1 | **Analysis** | 84d | 2023-02-20 | 2023-06-25 |  | 19.87d |  |  |  | 1242h | 135,461.25 |  |
| 3 | 1.1.1 | A-1 Investigate Background Information | 46.25d | 2023-02-20 | 2023-04-14 |  | 18.74d | 0d |  | Sana Khan Saleem | 370h | 55,500 | A-1 |
| 4 | 1.1.2 | A-2 Initiate Contact with Project Sponsors | 16d | 2023-04-14 | 2023-05-03 | 3 | 18.74d | 0d | start no earlier than 2023-02-28 | Sana Khan Saleem | 128h | 19,200 | A-2 |
| 5 | 1.1.3 | A-3 Hold Group Meeting to Prepare for Initial Contact | 16.14d | 2023-05-04 | 2023-05-19 | 4 | 18.74d | 0d |  | M. Rashid Iqbal; Barkat Ali Sheikh; Sana Khan Saleem | 240h | 16,168.56 | A-3 |
| 6 | 1.1.4 | A-4 Conduct Initial Meeting with User Sponsor (Lee Walker) | 8.57d | 2023-05-19 | 2023-05-25 | 5 | 20.02d | 0d |  | Barkat Ali Sheikh; M. Rashid Iqbal; Sana Khan Saleem | 120h | 8,326.02 | A-4 |
| 7 | 1.1.5 | A-5 Hold Meeting with Site Mgr (John Ahrns) | 4d | 2023-05-25 | 2023-05-30 | 6 | 20.14d | 0d |  | Sana Khan Saleem | 32h | 4,800 | A-5 |
| 8 | 1.1.6 | A-6 Hold Meeting with Information Manager (Kirsten Ingram) | 4d | 2023-05-30 | 2023-06-04 | 7 | 20.14d | 0d |  | Sana Khan Saleem | 32h | 4,800 | A-6 |
| 9 | 1.1.7 | A-7 Analyze System Objectives, Constraints, and Scope | 12.29d | 2023-06-04 | 2023-06-13 | 8 | 19.54d | 0d |  | Aziz Abdullah; Erum Jabeen; M. Fahad Mahar | 200h | 16,666.67 | A-7 |
| 10 | 1.1.8 | A-8 Analyze Available Resources, Benefits, and Feasibility | 7.75d | 2023-06-13 | 2023-06-25 | 9 | 19.54d | 0d |  | Aziz Abdullah; Erum Jabeen; M. Fahad Mahar | 120h | 10,000 | A-8 |
| 11 | 1.2 | **Design** | 9.28d | 2023-06-25 | 2023-07-07 |  | 16.6d |  |  |  | 216h | 22,577.66 | A-9 |
| 12 | 1.2.1 | D-1 Prepare and Submit Preliminary Project Proposal | 6d | 2023-06-25 | 2023-06-30 | 10 | 18.81d | 0d |  | Aziz Abdullah; Erum Jabeen | 96h | 9,600 | A-10 |
| 13 | 1.2.2 | D-2 Get Initial Approval from User Sponsor | 4.5d | 2023-06-30 | 2023-07-04 | 12 | 18.17d | 0d |  | Aziz Abdullah; Erum Jabeen | 72h | 7,200 | A-11 |
| 14 | 1.2.3 | D-3 Investigate Feasibility of Project Objectives | 3.31d | 2023-07-04 | 2023-07-07 | 13 | 16.6d | 0d |  | Aziz Abdullah; Erum Jabeen; Sana Khan Saleem | 48h | 5,777.66 | A-12 |
| 15 | 1.3 | **Construct** | 6.5d | 2023-07-07 | 2023-07-17 |  | 16.6d |  |  |  | 104h | 7,800 | A-13 |
| 16 | 1.3.1 | C-1 Prepare Diagrams of Proposed System | 3.78d | 2023-07-07 | 2023-07-11 | 14 | 16.6d | 0d |  | Affaf Ali Mughal; Nina Saleem | 40h | 3,000 | A-14 |
| 17 | 1.3.2 | C-2 Produce and Present Delivery 1 Documentation | 4.78d | 2023-07-11 | 2023-07-17 | 16 | 16.6d | 0d |  | Affaf Ali Mughal; Nina Saleem | 64h | 4,800 | A-15 |
| 18 | 1.4 | **Review** | 12.75d | 2023-07-17 | 2023-08-10 |  | 16.6d |  |  |  | 168h | 25,200 | A-16 |
| 19 | 1.4.1 | R-1 Review Project Deliverables with Client | 12d | 2023-07-17 | 2023-08-01 | 17 | 16.6d | 0d |  | Sana Khan Saleem | 96h | 14,400 | A-17 |
| 20 | 1.4.2 | R-2 Revise System Plan | 9d | 2023-08-01 | 2023-08-10 | 19 | 17.12d | 0d |  | Sana Khan Saleem | 72h | 10,800 | A-18 |
| 21 | 2 | **Phase 2: Design System Database** | 35.92d | 2023-08-10 | 2023-09-29 |  | 20.55d |  |  |  | 715.78h | 65,938.34 |  |
| 22 | 2.1 | **Analysis** | 21.47d | 2023-08-10 | 2023-09-09 |  | 21d |  |  | Affaf Ali Mughal | 491.78h | 49,177.83 | A-19 |
| 23 | 2.1.1 | A-1 Analyze Data Storage Requirements | 8d | 2023-08-10 | 2023-08-17 | 20 | 21d | 0d |  | Erum Jabeen | 64h | 6,400 | A-20 |
| 24 | 2.1.2 | A-2 Analyze Data Retrieval Requirements | 8d | 2023-08-18 | 2023-08-26 | 23 | 20.5d | 0d |  | Affaf Ali Mughal | 64h | 6,400 | A-21 |
| 25 | 2.1.3 | A-3 Analyze Software Requirements | 6d | 2023-08-26 | 2023-08-31 | 24 | 20.5d | 0d |  | Aziz Abdullah | 48h | 4,800 | A-22 |
| 26 | 2.1.4 | A-4 Analyze Hardware Requirements | 10d | 2023-08-31 | 2023-09-09 | 25 | 21d | 0d |  | Aziz Abdullah | 80h | 8,000 | A-23 |

| ID | WBS | Task | Duration | Start | Finish | Predecessors | Total slack | Free slack | Resources | Work | Cost | Text1 |
| --- | --- | --- | --- | --- | --- | --- | --- | --- | --- | --- | --- | --- |
| 27 | 2.2 | **Design** | 7.32d | 2023-09-09 | 2023-09-20 |  | 21.18d |  |  | 80h | 5,720.44 | A-24 |
| 28 | 2.2.1 | D-1 Design ER Diagram for Proposed System | 6.62d | 2023-09-09 | 2023-09-20 | 26 | 21.18d | 0d | Nina Saleem; Affaf Ali Mughal | 80h | 5,720.44 | A-25 |
| 29 | 2.3 | **Construct** | 1d | 2023-09-20 | 2023-09-21 |  | 21.18d |  |  | 16h | 1,440 | A-26 |
| 30 | 2.3.1 | C-1 Construct ER Diagram | 1.12d | 2023-09-20 | 2023-09-21 | 28 | 21.18d | 0d | Naveen Ahsan; Affaf Ali Mughal | 16h | 1,440 | A-27 |
| 31 | 2.4 | **Review** | 6.13d | 2023-09-21 | 2023-09-29 |  | 20.55d |  |  | 128h | 9,600.07 | A-28 |
| 32 | 2.4.1 | R-1 Review of Finalized ER Diagram with Client | 8d | 2023-09-21 | 2023-09-29 | 30 | 20.55d | 0d | Affaf Ali Mughal; M. Fahad Mahar | 128h | 9,600.07 | A-29 |
| 33 | 3 | **Phase 3: Back-End Database Module** | 24.55d | 2023-09-29 | 2023-11-02 |  | 20d |  |  | 532h | 32,316.35 | A-30 |
| 34 | 3.1 | **Analysis** | 0.55d | 2023-09-29 | 2023-09-30 |  | 20.5d |  |  | 24h | 1,657.69 | A-31 |
| 35 | 3.1.1 | A-1 Analyze Table Structure and Field Requirements | 1.32d | 2023-09-29 | 2023-09-30 | 32 | 20.5d | 0d | Erum Jabeen; Aziz Abdullah; Barkat Ali Sheikh | 24h | 1,657.69 | Design |
| 36 | 3.2 | **Design** | 10.45d | 2023-09-30 | 2023-10-16 |  | 20.5d |  |  | 236h | 12,650.96 | D-1 |
| 37 | 3.2.1 | D-1 Design Table Structure | 15.75d | 2023-09-30 | 2023-10-16 | 35 | 20.5d | 0d | Barkat Ali Sheikh; M. Fahad Khan | 236h | 12,650.96 | Construct |
| 38 | 3.3 | **Construct** | 10.38d | 2023-10-16 | 2023-10-30 |  | 21.18d |  |  | 224h | 12,007.69 | C-1 |
| 39 | 3.3.1 | C-1 Construct Table Structure | 6d | 2023-10-16 | 2023-10-21 | 37 | 21d | 0d | Barkat Ali Sheikh; M. Fahad Khan | 96h | 5,146.15 | C-2 |
| 40 | 3.3.2 | C-2 Construct Relationships between Tables | 8d | 2023-10-21 | 2023-10-30 | 39 | 21d | 0d | Barkat Ali Sheikh; M. Fahad Khan | 128h | 6,861.54 | C-3 |
| 41 | 3.4 | **Review** | 3.18d | 2023-10-30 | 2023-11-02 |  | 20d |  |  | 48h | 6,000 | Review |
| 42 | 3.4.1 | R-1 Review Table Structure with clients | 4.5d | 2023-10-30 | 2023-11-02 | 40 | 20d | 0d | Erum Jabeen; Sana Khan Saleem | 48h | 6,000 | R-1 |
| 43 | 4 | **Phase 4: Front-End User Interface Module** | 30.25d | 2023-11-02 | 2023-12-19 |  | 20d |  |  | 736h | 68,705.77 | R-2 |
| 44 | 4.1 | **Analysis** | 1.62d | 2023-11-02 | 2023-11-06 |  | 20d |  |  | 48h | 4,800 | R-3 |
| 45 | 4.1.1 | A-1 Analyze User Input Requirements | 4.25d | 2023-11-02 | 2023-11-06 | 42 | 20d | 0d | Aziz Abdullah; Affaf Ali Mughal | 48h | 4,800 | R-4 |
| 46 | 4.2 | **Design** | 8.38d | 2023-11-06 | 2023-11-17 |  | 20.94d |  |  | 336h | 28,067.31 | Phase 2: Project Management Reports |
| 47 | 4.2.1 | D-1 Design Graphical User Interface | 14.5d | 2023-11-06 | 2023-11-17 | 45 | 20.94d | 0d | Affaf Ali Mughal; M. Fahad Mahar; M. Rashid Iqbal; M. Fahad Khan | 336h | 28,067.31 | Analysis |
| 48 | 4.3 | **Construct** | 14.5d | 2023-11-17 | 2023-12-08 |  | 20.31d |  |  | 288h | 26,238.46 | A-1 |
| 49 | 4.3.1 | C-1 Construct Form Prototype | 6.75d | 2023-11-17 | 2023-11-22 | 47 | 20.94d | 0.25d | Affaf Ali Mughal; M. Fahad Mahar; M. Rashid Iqbal; M. Fahad Khan | 144h | 12,028.85 | A-2 |
| 50 | 4.3.2 | C-2 Obtain Feedback from Users | 15d | 2023-11-23 | 2023-12-05 | 49 | 20.75d | 0d | Aziz Abdullah | 120h | 12,000 | A-3 |
| 51 | 4.3.3 | C-3 Construct User Input Form | 2.88d | 2023-12-06 | 2023-12-08 | 50 | 20.31d | 0d | M. Rashid Iqbal; M. Fahad Khan | 24h | 2,209.62 | Design |

| ID | WBS | Task | Duration | Start | Finish | Predecessors | Total slack | Free slack | Resources | Work | Cost | Text1 |
| --- | --- | --- | --- | --- | --- | --- | --- | --- | --- | --- | --- | --- |
| 52 | 4.4 | **Review** | 5.75d | 2023-12-08 | 2023-12-19 |  | 20.31d |  |  | 64h | 9,600 | D-1 |
| 53 | 4.4.1 | R-1 Review User Input Form with Client | 4d | 2023-12-08 | 2023-12-13 | 51 | 20.31d | 0d | Sana Khan Saleem | 32h | 4,800 | Construct |
| 54 | 4.4.2 | R-2 Revise User Input Form | 4d | 2023-12-13 | 2023-12-19 | 53 | 20.62d | 0d | Sana Khan Saleem | 32h | 4,800 | C-1 |
| 55 | 5 | **Phase 5: Middleware (Cold Fusion) Module** | 13.63d | 2023-12-19 | 2024-01-08 |  | 21.44d |  |  | 366h | 36,229.32 | C-2 |
| 56 | 5.1 | **Analysis** | 3.38d | 2023-12-19 | 2023-12-22 |  | 19.38d |  |  | 48h | 4,800 | C-3 |
| 57 | 5.1.1 | A-1 Analyze User Input Requirements | 3d | 2023-12-19 | 2023-12-22 | 54 | 19.38d | 0d | Aziz Abdullah; Erum Jabeen | 48h | 4,800 | C-4 |
| 58 | 5.2 | **Design** | 1.38d | 2023-12-22 | 2023-12-26 |  | 19.38d |  |  | 78h | 7,228.71 | Test |
| 59 | 5.2.1 | D-1 Design Web Graphical User Interface | 5d | 2023-12-22 | 2023-12-26 | 57 | 19.38d | 0d | Affaf Ali Mughal; M. Rashid Iqbal; M. Fahad Khan | 78h | 7,228.71 | T-1 |
| 60 | 5.3 | **Construct** | 7.33d | 2023-12-26 | 2024-01-05 |  | 20.67d |  |  | 176h | 18,123.08 | Review |
| 61 | 5.3.1 | C-1 Construct Web Form Prototype | 5.88d | 2023-12-26 | 2023-12-31 | 59 | 21.31d | 0d | Affaf Ali Mughal; M. Rashid Iqbal; M. Fahad Khan | 96h | 9,092.31 | R-1 |
| 62 | 5.3.2 | C-2 Obtain Feedback from Users | 4d | 2023-12-31 | 2024-01-03 | 61 | 21.31d | 0d | Aziz Abdullah; Sana Khan Saleem | 48h | 6,000 | R-2 |
| 63 | 5.3.3 | C-3 Construct Web User Input Form | 2.33d | 2024-01-03 | 2024-01-05 | 62 | 20.67d | 0d | Affaf Ali Mughal; M. Rashid Iqbal; M. Fahad Khan | 32h | 3,030.77 | R-3 |
| 64 | 5.4 | **Review** | 1.54d | 2024-01-05 | 2024-01-08 |  | 20.67d |  |  | 64h | 6,077.54 | Phase 3: Skills Inventory Database Design |
| 65 | 5.4.1 | R-1 Review Web User Input Form with Client | 1.96d | 2024-01-05 | 2024-01-06 | 63 | 20.67d | 0d | Affaf Ali Mughal; M. Fahad Khan; M. Rashid Iqbal | 32h | 3,046.77 | Analysis |
| 66 | 5.4.2 | R-2 Revise Web User Input Form | 2.33d | 2024-01-06 | 2024-01-08 | 65 | 21.35d | 0d | Aziz Abdullah; M. Fahad Khan; M. Rashid Iqbal | 32h | 3,030.77 | A-1 |
| 67 | 6 | **Phase 6: Queries/Search Module** | 24.12d | 2024-01-08 | 2024-02-10 |  | 20.62d |  |  | 400h | 29,651.01 | A-2 |
| 68 | 6.1 | **Analysis** | 4.12d | 2024-01-08 | 2024-01-13 |  | 21.72d |  |  | 64h | 5,087.17 | A-3 |
| 69 | 6.1.1 | A-1 Analyze Search Requirements | 6.38d | 2024-01-08 | 2024-01-13 | 66 | 21.72d | 0d | Aziz Abdullah; Nida Rizwan | 64h | 5,087.17 | A-4 |
| 70 | 6.2 | **Design** | 8.91d | 2024-01-13 | 2024-01-25 |  | 21.09d |  |  | 96h | 7,200 | Design |
| 71 | 6.2.1 | D-1 Design Queries | 6.78d | 2024-01-13 | 2024-01-23 | 69 | 21.72d | 0d | Nida Rizwan; Aziz Abdullah | 64h | 4,800 | D-1 |
| 72 | 6.2.2 | D-2 Design Query Results Forms | 3.25d | 2024-01-23 | 2024-01-25 | 71 | 21.09d | 0d | Nida Rizwan; Aziz Abdullah | 32h | 2,400 | Construct |
| 73 | 6.3 | **Construct** | 6.88d | 2024-01-25 | 2024-02-05 |  | 21.09d |  |  | 192h | 14,961.54 | C-1 |
| 74 | 6.3.1 | C-1 Construct Queries | 6.16d | 2024-01-25 | 2024-01-30 | 72 | 21.09d | 0d | Barkat Ali Sheikh; M. Rashid Iqbal; M. Fahad Khan | 96h | 6,123.08 | Review |
| 75 | 6.3.2 | C-2 Construct Query Results Forms | 8.75d | 2024-01-30 | 2024-02-05 | 74 | 21.32d | 0d | M. Rashid Iqbal; M. Fahad Khan | 96h | 8,838.46 | R-1 |

| ID | WBS | Task | Duration | Start | Finish | Predecessors | Total slack | Free slack | Resources | Work | Cost | Text1 |
| --- | --- | --- | --- | --- | --- | --- | --- | --- | --- | --- | --- | --- |
| 76 | 6.4 | **Review** | 4.22d | 2024-02-05 | 2024-02-10 |  | 20.62d |  |  | 48h | 2,402.31 | R-2 |
| 77 | 6.4.1 | R-1 Review Query Results Forms with Client | 1.93d | 2024-02-05 | 2024-02-07 | 75 | 21.42d | 0d | Barkat Ali Sheikh; Sana Khan Saleem | 24h | 2,229.23 | Install |
| 78 | 6.4.2 | R-2 Revise Query Results Forms | 3d | 2024-02-07 | 2024-02-10 | 77 | 20.62d | 0d | Barkat Ali Sheikh | 24h | 173.08 | I-1 |
| 79 | 7 | **Phase 7: Queries/Search Module for Web** | 18.3d | 2024-02-10 | 2024-03-07 |  | 20.62d |  |  | 432h | 31,911.66 | Unit Test |
| 80 | 7.1 | **Analysis** | 1.08d | 2024-02-10 | 2024-02-13 |  | 20.62d |  |  | 48h | 4,800 | T-1 |
| 81 | 7.1.1 | A-1 Analyze Search Requirements | 3.21d | 2024-02-10 | 2024-02-13 | 78 | 20.62d | 0d | Aziz Abdullah; Erum Jabeen; M. Fahad Khan | 48h | 4,800 | T-2 |
| 82 | 7.2 | **Design** | 8.1d | 2024-02-13 | 2024-02-23 |  | 21.7d |  |  | 200h | 13,792.43 | T-3 |
| 83 | 7.2.1 | D-1 Design Queries | 6.32d | 2024-02-13 | 2024-02-20 | 81 | 21.7d | 0d | M. Fahad Mahar; M. Rashid Iqbal; M. Fahad Khan; Nida Rizwan | 120h | 8,227.11 | Phase 4: Skills Data Entry (In House) |
| 84 | 7.2.2 | D-2 Design Web Query Results Forms | 3.97d | 2024-02-20 | 2024-02-23 | 83 | 21.7d | 0d | M. Fahad Mahar; M. Rashid Iqbal; M. Fahad Khan; Nida Rizwan | 80h | 5,565.33 | Analysis |
| 85 | 7.3 | **Construct** | 4.25d | 2024-02-23 | 2024-02-29 |  | 21.57d |  |  | 120h | 8,288.46 | A-1 |
| 86 | 7.3.1 | C-1 Construct Queries | 4.25d | 2024-02-23 | 2024-02-26 | 84 | 21.7d | 0d | Erum Jabeen; Affaf Ali Mughal; Barkat Ali Sheikh | 72h | 4,973.08 | Design |
| 87 | 7.3.2 | C-2 Construct Web Query Results Forms | 2.93d | 2024-02-26 | 2024-02-29 | 86 | 21.57d | 0d | Erum Jabeen; Affaf Ali Mughal; Barkat Ali Sheikh | 48h | 3,315.38 | D-1 |
| 88 | 7.4 | **Review** | 4.88d | 2024-02-29 | 2024-03-07 |  | 21.57d |  |  | 64h | 5,030.77 | Construct |
| 89 | 7.4.1 | R-1 Review Web Query Results Forms with Client | 5.5d | 2024-02-29 | 2024-03-05 | 87 | 21.57d | 0d | Barkat Ali Sheikh; Sana Khan Saleem | 64h | 5,030.77 | C-1 |
| 90 | 7.4.2 | R-2 Revise Web Query Results Forms | 2d | 2024-03-05 | 2024-03-07 | 89 | 22.2d | 0d |  |  |  | Review |
| 91 | 8 | **Phase 8: Report Module** | 22.38d | 2024-03-07 | 2024-04-08 |  | 22.2d |  |  | 456h | 35,114.49 | I-1 |
| 92 | 8.1 | **Analysis** | 2.7d | 2024-03-07 | 2024-03-11 |  | 22.2d |  |  | 48h | 4,800 | Unit Test |
| 93 | 8.1.1 | A-1 Analyze Report Requirements | 6d | 2024-03-07 | 2024-03-11 | 90 | 22.2d | 0d | Aziz Abdullah | 48h | 4,800 | T-1 |
| 94 | 8.2 | **Design** | 4d | 2024-03-11 | 2024-03-16 |  | 23.5d |  |  | 32h | 3,200.07 | T-2 |
| 95 | 8.2.1 | D-1 Design Reports | 4d | 2024-03-11 | 2024-03-16 | 93 | 23.5d | 0d | Aziz Abdullah | 32h | 3,200.07 | T-3 |
| 96 | 8.3 | **Construct** | 9.93d | 2024-03-16 | 2024-03-29 |  | 22.88d |  |  | 248h | 17,052.88 | Phase 5: Employee Update Module |
| 97 | 8.3.1 | C-1 Construct Prototype | 5.75d | 2024-03-16 | 2024-03-20 | 95 | 23.32d | 0d | Affaf Ali Mughal; M. Fahad Mahar; M. Rashid Iqbal; M. Fahad Khan | 120h | 10,024.04 | Analysis |
| 98 | 8.3.2 | C-2 Obtain Feedback from Users | 6d | 2024-03-20 | 2024-03-26 | 97 | 23.32d | 0d | Barkat Ali Sheikh | 48h | 346.15 | A-1 |
| 99 | 8.3.3 | C-3 Construct Reports | 4.05d | 2024-03-26 | 2024-03-29 | 98 | 22.88d | 0d | Affaf Ali Mughal; M. Fahad Mahar; M. Rashid Iqbal; M. Fahad Khan | 80h | 6,682.69 | Design |

| ID | WBS | Task | Duration | Start | Finish | Predecessors | Total slack | Free slack | Constraint | Resources | Work | Cost | Text1 |
| --- | --- | --- | --- | --- | --- | --- | --- | --- | --- | --- | --- | --- | --- |
| 100 | 8.4 | **Review** | 5.75d | 2024-03-29 | 2024-04-08 |  | 22.88d |  |  |  | 128h | 10,061.54 | D-1 |
| 101 | 8.4.1 | R-1 Review Reports with Client | 5.43d | 2024-03-29 | 2024-04-03 | 99 | 22.88d | 0d |  | Barkat Ali Sheikh; Sana Khan Saleem | 64h | 5,030.77 | Construct |
| 102 | 8.4.2 | R-2 Revise Reports with Client | 5.38d | 2024-04-03 | 2024-04-08 | 101 | 22.88d | 0d |  | Barkat Ali Sheikh; Sana Khan Saleem | 64h | 5,030.77 | C-1 |
| 103 | 9 | **Phase 9: Security Login Module** | 16.07d | 2024-04-08 | 2024-04-30 |  | 22.35d |  |  |  | 471.67h | 36,775.16 | Review |
| 104 | 9.1 | **Analysis** | 4.92d | 2024-04-08 | 2024-04-15 |  | 24.01d |  |  |  | 160h | 11,051.28 | R-1 |
| 105 | 9.1.1 | A-1 Analyze Security Requirements | 9.51d | 2024-04-08 | 2024-04-15 | 102 | 24.01d | 0d |  | Aziz Abdullah; Erum Jabeen; Barkat Ali Sheikh | 160h | 11,051.28 | R-2 |
| 106 | 9.2 | **Design** | 4.96d | 2024-04-15 | 2024-04-22 |  | 23.3d |  |  |  | 167.67h | 14,010.42 | R-3 |
| 107 | 9.2.1 | D-1 Design Security Login Types | 4.68d | 2024-04-15 | 2024-04-19 | 105 | 21.43d | 0d |  | Affaf Ali Mughal; M. Fahad Mahar; M. Rashid Iqbal; M. Fahad Khan | 87.67h | 7,327.72 | Test |
| 108 | 9.2.2 | D-2 Design Security Login Interface | 3.43d | 2024-04-19 | 2024-04-22 | 107 | 21.43d | 0d |  | Affaf Ali Mughal; M. Fahad Mahar; M. Rashid Iqbal; M. Fahad Khan | 80h | 6,682.69 | T-1 |
| 109 | 9.3 | **Construct** | 3d | 2024-04-22 | 2024-04-25 |  | 21.55d |  |  |  | 80h | 6,682.69 | Phase 6: Security Login Module |
| 110 | 9.3.1 | C-1 Construct Security Login Form | 3.68d | 2024-04-22 | 2024-04-25 | 108 | 21.55d | 0d |  | Affaf Ali Mughal; M. Fahad Mahar; M. Rashid Iqbal; M. Fahad Khan | 80h | 6,682.69 | Analysis |
| 111 | 9.4 | **Review** | 3.2d | 2024-04-25 | 2024-04-30 |  | 21.55d |  |  |  | 64h | 5,030.77 | A-1 |
| 112 | 9.4.1 | R-1 Review Security Login Form with Client | 2.55d | 2024-04-25 | 2024-04-28 | 110 | 21.55d | 0d |  | Barkat Ali Sheikh; Sana Khan Saleem | 32h | 2,515.38 | Design |
| 113 | 9.4.2 | R-2 Revise Security Login Form with Client | 2.57d | 2024-04-28 | 2024-04-30 | 112 | 22.1d | 0d |  | Barkat Ali Sheikh; Sana Khan Saleem | 32h | 2,515.38 | D-1 |
| 114 | 10 | **Phase 10: Installation** | 13.25d | 2024-04-30 | 2024-05-17 |  | 20.48d |  |  |  | 370h | 31,697.44 | D-2 |
| 115 | 10.1 | **Configuration and Installation** | 13.25d | 2024-04-30 | 2024-05-17 |  | 20.48d |  |  |  | 370h | 31,697.44 | Construct |
| 116 | 10.1.1 | I-1 Conduct Preliminary System Testing | 3.88d | 2024-04-30 | 2024-05-03 | 113 | 20.6d | 0d |  | Affaf Ali Mughal; M. Fahad Mahar; M. Rashid Iqbal; M. Fahad Khan | 80h | 6,682.69 | C-1 |
| 117 | 10.1.2 | I-2 Refine and Debug System | 5.83d | 2024-05-03 | 2024-05-08 | 116 | 20.6d | 0d |  | Affaf Ali Mughal; M. Fahad Mahar; M. Rashid Iqbal; M. Fahad Khan | 122h | 10,190.71 | C-4 |
| 118 | 10.1.3 | I-3 Integrate and Install System | 5.42d | 2024-05-08 | 2024-05-11 | 117 | 21.6d | 0d |  | Affaf Ali Mughal; M. Fahad Mahar; M. Rashid Iqbal; M. Fahad Khan | 120h | 10,024.04 | Test |
| 119 | 10.1.4 | I-4 Obtain Feedback from Users | 6d | 2024-05-12 | 2024-05-17 | 118 | 20.48d | 0d |  | Aziz Abdullah | 48h | 4,800 | T-1 |
| 120 | 11 | **Phase 11: Testing** | 7.5d | 2024-05-17 | 2024-05-28 |  | 13.02d |  |  |  | 304h | 23,459.41 | Review |
| 121 | 11.1 | **Testing** | 7.5d | 2024-05-17 | 2024-05-28 |  | 13.02d |  |  |  | 304h | 23,459.41 | R-1 |
| 122 | 11.1.1 | T-1 Develop and Load Test Data | 3.67d | 2024-05-17 | 2024-05-21 | 119 | 20.48d | 0d |  | M. Fahad Khan; M. Rashid Iqbal; M. Fahad Mahar | 48h | 3,929.71 | R-2 |
| 123 | 11.1.2 | T-2 Conduct Trial Run of Each Module | 3.67d | 2024-05-21 | 2024-05-23 | 122 | 21d | 0d |  | M. Rashid Iqbal; M. Fahad Khan; M. Fahad Mahar | 48h | 3,929.71 | Phase 7: Final Construction |
| 124 | 11.1.3 | T-3 Conduct Error Checking and Data Validation | 4d | 2024-05-24 | 2024-05-28 | 123 | 21d |  |  | Affaf Ali Mughal; M. Fahad Mahar | 64h | 4,800 | Production Ready Testing |
| 125 | 11.1.4 | T-4 Conduct Stress Test | 6d | 2024-05-17 | 2024-05-23 |  | 13.02d | 0d | start no earlier than 2024-05-17 | Affaf Ali Mughal; M. Fahad Mahar | 96h | 7,200 | T-1 |
| 126 | 11.1.5 | T-5 Refine and Debug System | 3d | 2024-05-23 | 2024-05-25 | 125 | 13.02d | 0d |  | Affaf Ali Mughal; M. Fahad Mahar | 48h | 3,600 | T-2 |

| ID | WBS | Task | Duration | Start | Finish | Predecessors | Total slack | Free slack | Constraint | Resources | Work | Cost | Text1 |
| --- | --- | --- | --- | --- | --- | --- | --- | --- | --- | --- | --- | --- | --- |
| 127 | 12 | **Phase 12: Documentation and Training** | 22.75d | 2024-05-25 | 2024-06-26 |  | 0d |  |  |  | 423h | 26,204.11 | T-3 |
| 128 | 12.1 | **Documentation** | 9.73d | 2024-05-25 | 2024-06-07 |  | 13.02d |  |  |  | 200h | 13,172.86 | T-4 |
| 129 | 12.1.1 | D-1 Construct Users Manual | 6.88d | 2024-05-25 | 2024-05-31 | 126 | 13.02d | 0d |  | Aziz Abdullah; Barkat Ali Sheikh | 72h | 3,859.69 | T-5 |
| 130 | 12.1.2 | D-2 Construct Developers Manual | 8.98d | 2024-05-31 | 2024-06-07 | 129 | 13.02d |  |  | Aziz Abdullah; Barkat Ali Sheikh; Affaf Ali Mughal | 128h | 9,313.17 | T-6 |
| 131 | 12.2 | **Training** | 6d | 2024-06-07 | 2024-06-14 |  | 0d |  |  |  | 63h | 454.33 | T-7 |
| 132 | 12.2.1 | T-1 Conduct Training Sessions | 7.88d | 2024-06-07 | 2024-06-14 |  | 0d |  | finish no earlier than 2024-06-14 | Barkat Ali Sheikh | 63h | 454.33 | Documentation |
| 133 | 12.3 | **Review** | 7.75d | 2024-06-15 | 2024-06-26 |  | 0d |  |  |  | 160h | 12,576.92 | D-1 |
| 134 | 12.3.1 | R-1 Final Review with Clients | 13.12d | 2024-06-15 | 2024-06-26 | 132 | 0d |  | finish no earlier than 2024-06-24 | Barkat Ali Sheikh; Sana Khan Saleem | 160h | 12,576.92 | D-2 |
